How a schedule from Planner changed from version to version. A marks actual dates.

## Version 1 (saved 2009-09-24)

Note of the change: * change authors file * add draft Planner file

| ID | WBS | Task | Duration | Start | Finish | Predecessors | Complete | Constraint |
| --- | --- | --- | --- | --- | --- | --- | --- | --- |
| 1 |  | Tunnel plugin |  | 2009-09-25 | 2009-10-08 |  |  |  |
| 2 | 2 | **Bug fixing (0.2.2)** |  | 2009-10-08 | 2009-10-20 | 1 |  |  |
| 3 |  | Issue 18 |  | 2009-10-08 | 2009-10-12 |  | 87% |  |
| 4 |  | Issue 21 |  | 2009-10-12 | 2009-10-14 | 3 | 100% |  |
| 5 |  | Issue 23 |  | 2009-10-15 | 2009-10-16 | 4 |  |  |
| 6 |  | Issue 25 |  | 2009-10-16 | 2009-10-20 | 5 |  |  |
| 7 | 3 | **PosgreSQL engine** |  | 2009-09-25 | 2009-10-20 |  |  |  |
| 8 |  | Navigation |  | 2009-09-25 | 2009-10-07 |  |  |  |
| 9 |  | SQL execution/fetching |  | 2009-10-07 | 2009-10-20 | 8 |  |  |
| 10 |  | Testing phase |  | 2009-10-23 | 2009-10-29 | 7FS+72h, 6FS+72h |  |  |
| 11 |  | Release 0.2.2 | 0d | 2009-10-30 | 2009-10-30 |  |  | must start on 2009-10-30 |
| 12 | 6 | **GSQLNavTree** |  | 2009-11-02 | 2009-11-07 | 11FS+72h |  |  |
| 13 |  | *_property_get |  | 2009-11-02 | 2009-11-07 |  |  |  |
| 14 |  | Bug fixing (0.2.5) |  | 2009-09-25 | 2009-09-29 |  |  |  |
| 15 | 8 | **GSQLNavHelper** |  | 2009-11-08 | 2009-11-15 |  |  | must start on 2009-11-06 |
| 16 |  | GSQLNavTree python bind |  | 2009-11-08 | 2009-11-15 | 12 |  |  |
| 17 |  | Release 0.2.5 | 0d | 2009-12-27 | 2009-12-27 |  |  | must start on 2009-12-27 |

## Version 2 (saved 2009-10-18)

Note of the change: actualization of the gsql.planner state.

Last finish stays 2009-12-27.

Removed: 3 Issue 18

Changed:

| ID | Task | Start | Finish | Complete | Predecessors | Other |
| --- | --- | --- | --- | --- | --- | --- |
| 1 | Tunnel plugin |  | 2009-10-08 → 2009-10-23 (+15d) | 0% → 60% |  |  |
| 2 | **Bug fixing (0.2.2)** | 2009-10-08 → 2009-09-25 (-13d) | 2009-10-20 → 2009-10-17 (-3d) | 0% → 75% | 1 → none |  |
| 3 | Issue 21 | 2009-10-12 → 2009-09-25 (-17d) | 2009-10-14 → 2009-10-04 (-10d) |  | Issue 18 → none | resources Taras Halturin → Estêvão Samuel Procópio |
| 4 | Issue 23 | 2009-10-15 → 2009-10-04 (-11d) | 2009-10-16 → 2009-10-09 (-7d) | 0% → 75% |  |  |
| 5 | Issue 25 | 2009-10-16 → 2009-10-10 (-6d) | 2009-10-20 → 2009-10-17 (-3d) | 0% → 75% |  |  |
| 9 | Testing phase |  |  |  | 6FS+72h, 5FS+72h → 5, 1, 6FS+72h | resources Estêvão Samuel Procópio [50%]; Taras Halturin [50%] → Taras Halturin [50%]; Estêvão Samuel Procópio [50%] |
| 10 | Release 0.2.2 |  |  |  |  | resources Estêvão Samuel Procópio; Taras Halturin → Taras Halturin; Estêvão Samuel Procópio |
| 16 | Release 0.2.5 |  |  |  |  | resources Estêvão Samuel Procópio; Taras Halturin → Taras Halturin; Estêvão Samuel Procópio |

## Version 3 (saved 2009-10-19)

Note of the change: [pgsql-engine] updating planner tasks

Last finish stays 2009-12-27. Complete tasks 1 → 3.

Added:

| ID | Task | Start | Finish |
| --- | --- | --- | --- |
| 9 | Edit SQL for Views | 2009-09-25 | 2009-09-25 |

Changed:

| ID | Task | Complete | Other |
| --- | --- | --- | --- |
| 7 | Navigation | 0% → 90% |  |
| 8 | SQL execution/fetching/stopping | 0% → 100% | was named SQL execution/fetching |
| 10 | Testing phase |  | resources Taras Halturin [50%]; Estêvão Samuel Procópio [50%] → Estêvão Samuel Procópio [50%]; Taras Halturin [50%] |
| 11 | Release 0.2.2 |  | resources Taras Halturin; Estêvão Samuel Procópio → Estêvão Samuel Procópio; Taras Halturin |
| 17 | Release 0.2.5 |  | resources Taras Halturin; Estêvão Samuel Procópio → Estêvão Samuel Procópio; Taras Halturin |

## Version 4 (saved 2010-02-26)

Note of the change: Pulugin 'Tunnel'. Configuration dialog.

Last finish stays 2009-12-27. Complete tasks 3 → 4.

Changed:

| ID | Task | Start | Finish | Complete | Predecessors | Other |
| --- | --- | --- | --- | --- | --- | --- |
| 1 | Tunnel plugin |  | 2009-10-23 → 2009-11-04 (+12d) |  |  |  |
| 5 | Issue 25 |  |  | 75% → 100% |  |  |
| 10 | Testing phase | 2009-10-23 → 2009-11-05 (+13d) | 2009-10-29 → 2009-11-13 (+15d) |  |  | resources Estêvão Samuel Procópio [50%]; Taras Halturin [50%] → Taras Halturin [50%]; Estêvão Samuel Procópio [50%] |
| 11 | Release 0.2.2 | 2009-10-30 → 2009-11-14 (+15d) | 2009-10-30 → 2009-11-14 (+15d) |  | none → 10 | constraint must start on 2009-10-30 → must start on 2009-11-14; resources Estêvão Samuel Procópio; Taras Halturin → Taras Halturin; Estêvão Samuel Procópio |
| 12 | **GSQLNavTree** | 2009-11-02 → 2009-11-17 (+15d) | 2009-11-07 → 2009-11-22 (+15d) |  |  |  |
| 13 | *_property_get | 2009-11-02 → 2009-11-17 (+15d) | 2009-11-07 → 2009-11-22 (+15d) |  |  |  |
| 15 | **GSQLNavHelper** | 2009-11-08 → 2009-11-23 (+15d) | 2009-11-15 → 2009-11-30 (+15d) |  |  |  |
| 16 | GSQLNavTree python bind | 2009-11-08 → 2009-11-23 (+15d) | 2009-11-15 → 2009-11-30 (+15d) |  |  |  |
| 17 | Release 0.2.5 |  |  |  |  | resources Estêvão Samuel Procópio; Taras Halturin → Taras Halturin; Estêvão Samuel Procópio |
